# WBSv3

Schedule from MS Project, 2009-04-21 to 2009-06-09, costs in ￥.

## Calendars

- Standard: Mon-Fri 08:00-12:00, 13:00-17:00; Sat-Sun off.

## Resources

| Resource | Rate |
| --- | --- |
| 钱振雷 | 80 |
| 任豪毅 | 80 |
| 张丹枫 | 80 |
| 杨毅 | 80 |
| 孙圣鹏 | 80 |
| 梁阳 | 80 |

## Schedule

| ID | WBS | Task | Type | Duration | Start | Finish | Predecessors | Total slack | Free slack | Constraint | Resources | Work | Cost |
| --- | --- | --- | --- | --- | --- | --- | --- | --- | --- | --- | --- | --- | --- |
| 1 | 1 | **需求开发过程** |  | 30.62d | 2009-04-21 08:00 | 2009-06-02 13:55 |  | 0d |  |  |  | 234.57h | 18,765.99 |
| 2 | 1.1 | **需求获取** |  | 8d | 2009-04-21 08:00 | 2009-04-30 17:00 |  | 1d |  |  |  | 65.08h | 5,206.41 |
| 3 | 1.1.1 | 编写项目试图与范围 |  | 6.67h | 2009-04-21 08:00 | 2009-04-21 15:40 |  | 4.5d | 0d | start no earlier than 2009-04-21 08:00 | 钱振雷 [50%]; 孙圣鹏 [50%] | 5h | 400 |
| 4 | 1.1.2 | 确定需求开发过程 |  | 2h | 2009-04-21 15:40 | 2009-04-22 08:40 | 3 | 4.5d | 1.42d |  | 张丹枫 | 2h | 160 |
| 5 | 1.1.3 | 用户群分类 |  | 4.66h | 2009-04-22 08:00 | 2009-04-22 13:39 |  | 4d | 0.92d | start no earlier than 2009-04-22 08:00 | 任豪毅 [70%]; 杨毅 [70%]; 梁阳 [80%] | 8.93h | 714.66 |
| 6 | 1.1.4 | 选择产品代表 |  | 3h | 2009-04-22 08:00 | 2009-04-22 11:00 |  | 0d |  | start no earlier than 2009-04-22 08:00 | 钱振雷 [60%] | 1.8h | 144 |
| 7 | 1.1.5 | 建立核心队伍 |  | 2h | 2009-04-22 08:00 | 2009-04-22 10:00 |  | 0d |  | start no earlier than 2009-04-22 08:00 | 任豪毅 | 2h | 160 |
| 8 | 1.1.6 | 确定使用实例 |  | 12h | 2009-04-23 13:00 | 2009-04-24 17:00 | 3, 4, 5 | 3.08d | 0d | finish no earlier than 2009-04-24 17:00 | 张丹枫 [50%]; 梁阳 [50%]; 钱振雷 [50%]; 孙圣鹏 [50%]; 杨毅 [50%] | 24h | 1,920 |
| 9 | 1.1.7 | 召开应用程序开发联系会议 |  | 5.33h | 2009-04-27 08:00 | 2009-04-27 14:20 | 8 | 3.08d | 0.9d | start no earlier than 2009-04-27 08:00 | 梁阳 [50%]; 孙圣鹏 [50%] | 4h | 320 |
| 10 | 1.1.8 | 分析用户工作流程 |  | 3.5h | 2009-04-28 13:30 | 2009-04-28 17:00 | 9 | 2.19d | 0d | finish no earlier than 2009-04-28 17:00 | 张丹枫 [50%]; 钱振雷 [50%] | 3h | 240 |
| 11 | 1.1.9 | 确定质量属性 |  | 3.36h | 2009-04-29 08:00 | 2009-04-29 11:21 | 10 | 3.19d | 0d | start no earlier than 2009-04-29 08:00 | 孙圣鹏 [70%]; 张丹枫 [70%] | 4h | 320 |
| 12 | 1.1.10 | 检查问题报告 |  | 5h | 2009-04-29 11:21 | 2009-04-30 08:21 | 11 | 3.19d | 0.56d | start no earlier than 2008-04-29 08:00 | 钱振雷 [50%]; 任豪毅 [50%] | 5h | 400 |
| 13 | 1.1.11 | 需求重用 |  | 3.15h | 2009-04-30 13:51 | 2009-04-30 17:00 | 12 | 2.62d | 0d | finish no earlier than 2009-04-30 17:00 | 杨毅 [70%]; 孙圣鹏 [50%]; 梁阳 [50%] | 5.35h | 427.75 |
| 14 | 1.1.12 | 需求获取结束 | milestone | 0h | 2009-04-30 17:00 | 2009-04-30 17:00 | 13 | 2.62d |  |  | 任豪毅 |  |  |
| 15 | 1.2 | **需求分析** |  | 6.34d | 2009-05-05 14:00 | 2009-05-13 16:41 |  | 0d |  |  |  | 57.5h | 4,600 |
| 16 | 1.2.1 | 绘制关联图 |  | 3h | 2009-05-05 14:00 | 2009-05-05 17:00 | 14 | 0d |  | finish no earlier than 2009-05-05 17:00 | 杨毅 [50%] | 1.5h | 120 |
| 17 | 1.2.2 | 创建开发原型 |  | 13.53h | 2009-05-06 08:00 | 2009-05-07 14:31 | 16 | 0d |  |  | 孙圣鹏 [50%]; 任豪毅 [60%]; 梁阳 [60%]; 钱振雷 [50%]; 张丹枫 [50%] | 23h | 1,840 |
| 18 | 1.2.3 | 分析可行性 |  | 4h | 2009-05-08 08:00 | 2009-05-08 12:00 |  | 0d |  | start no earlier than 2009-05-08 08:00 | 梁阳 [50%]; 任豪毅 [50%] | 3h | 240 |
| 19 | 1.2.4 | 确定需求优先级 |  | 1.91h | 2009-05-11 08:00 | 2009-05-11 09:54 |  | 1.99d | 0d | start no earlier than 2009-05-09 08:00 | 杨毅 [70%]; 孙圣鹏 [50%] | 2h | 160 |
| 20 | 1.2.5 | 为需求建立模型 |  | 9.26h | 2009-05-11 09:54 | 2009-05-12 11:09 | 19 | 1.99d | 0d |  | 任豪毅 [60%]; 梁阳 [60%]; 张丹枫 [60%]; 钱振雷 [50%] | 15h | 1,200 |
| 21 | 1.2.6 | 编写数据字典 |  | 9.52h | 2009-05-12 11:09 | 2009-05-13 13:41 | 20 | 1.99d | 0d |  | 钱振雷 [70%]; 杨毅 [50%] | 10h | 800 |
| 22 | 1.2.7 | 应用质量功能调配 |  | 3h | 2009-05-13 13:41 | 2009-05-13 16:41 | 21 | 1.99d | 0d |  | 张丹枫 [50%]; 孙圣鹏 [50%]; 梁阳 [50%] | 3h | 240 |
| 23 | 1.2.8 | 需求分析完成 | milestone | 0h | 2009-05-13 16:41 | 2009-05-13 16:41 | 22 | 1.99d | 0.04d |  | 任豪毅 |  |  |
| 24 | 1.3 | **需求规格说明** |  | 4d | 2009-05-14 08:00 | 2009-05-20 08:01 |  | 1.95d |  |  |  | 32h | 2,560 |
| 25 | 1.3.1 | 采用软件需求规格模板 |  | 12.5h | 2009-05-14 08:00 | 2009-05-15 13:30 | 23 | 1.95d | 0d | start no earlier than 2009-05-14 08:00 | 杨毅 [60%]; 钱振雷 [50%]; 孙圣鹏 [50%] | 15h | 1,200 |
| 26 | 1.3.2 | 指明需求来源 |  | 6.67h | 2009-05-15 13:30 | 2009-05-18 11:10 | 25 | 1.95d | 0d |  | 张丹枫 [50%]; 梁阳 [50%] | 5h | 400 |
| 27 | 1.3.3 | 为每一项需求注上标号 |  | 5.55h | 2009-05-18 11:10 | 2009-05-19 08:43 | 26 | 1.95d | 0d |  | 任豪毅 [60%]; 钱振雷 [50%] | 5h | 400 |
| 28 | 1.3.4 | 记录业务规范 |  | 4.45h | 2009-05-19 08:43 | 2009-05-19 14:10 | 27 | 1.95d | 0d |  | 杨毅 [60%]; 梁阳 [50%] | 4h | 320 |
| 29 | 1.3.5 | 创建需求跟踪能力矩阵 |  | 2.86h | 2009-05-19 14:10 | 2009-05-20 08:01 | 28 | 1.95d | 0d |  | 任豪毅 [70%]; 孙圣鹏 [50%] | 3h | 240 |
| 30 | 1.3.6 | SRS提交 | milestone | 0h | 2009-05-20 08:01 | 2009-05-20 08:01 | 29 | 1.95d |  |  | 杨毅 |  |  |

| ID | WBS | Task | Type | Duration | Start | Finish | Predecessors | Total slack | Constraint | Resources | Work | Cost |
| --- | --- | --- | --- | --- | --- | --- | --- | --- | --- | --- | --- | --- |
| 31 | 1.4 | **需求规格审核** |  | 7.66d | 2009-05-21 16:39 | 2009-06-02 13:55 |  | 0d |  |  | 79.99h | 6,399.58 |
| 32 | 1.4.1 | 审查需求文档 |  | 8.34h | 2009-05-21 16:39 | 2009-05-22 17:00 | 30 | 0d | finish no earlier than 2009-05-22 17:00 | 张丹枫 [60%]; 钱振雷 [60%]; 孙圣鹏 [50%]; 梁阳 [50%] | 14.84h | 1,187.05 |
| 33 | 1.4.2 | 编写测试用例 |  | 24.34h | 2009-05-25 08:00 | 2009-05-29 09:56 | 32 | 0d | finish no earlier than 2009-05-27 17:00 | 梁阳 [50%]; 张丹枫 [60%]; 任豪毅 [50%]; 杨毅 [50%]; 孙圣鹏 [50%] | 40.16h | 3,212.53 |
| 34 | 1.4.3 | 编写用户手册 |  | 14.81h | 2009-05-29 09:56 | 2009-06-02 08:45 | 33 | 0d | start no earlier than 2008-05-27 08:00 | 钱振雷 [50%]; 梁阳 [70%]; 任豪毅 [50%] | 20h | 1,600 |
| 35 | 1.4.4 | 确定合格的标准 |  | 4.17h | 2009-06-02 08:45 | 2009-06-02 13:55 | 34 | 0d | start no earlier than 2008-05-30 08:00 | 孙圣鹏 [80%]; 张丹枫 [50%] | 5h | 400 |
| 36 | 1.4.5 | SRS审核完毕 | milestone | 0h | 2009-06-02 13:55 | 2009-06-02 13:55 | 35 | 0d |  | 任豪毅 |  |  |
| 37 | 2 | **需求管理过程** |  | 5.31d | 2009-06-02 08:00 | 2009-06-09 10:29 |  | 0d |  |  | 44.1h | 3,528 |
| 38 | 2.1 | 确定需求变更控制过程 |  | 4h | 2009-06-02 08:00 | 2009-06-02 12:00 |  | 0d | start no earlier than 2009-06-02 08:00 | 杨毅 | 4h | 320 |
| 39 | 2.2 | 建立变更控制委员会 |  | 2h | 2009-06-02 13:00 | 2009-06-02 15:00 | 38 | 0d |  | 任豪毅 | 2h | 160 |
| 40 | 2.3 | **进行需求变更影响分析** |  | 2.04d | 2009-06-02 15:00 | 2009-06-04 15:19 |  | 0d |  |  | 16h | 1,280 |
| 41 | 2.3.1 | 变更涉及问题核对表 |  | 7.27h | 2009-06-02 15:00 | 2009-06-03 14:16 | 39 | 0d |  | 钱振雷 [50%]; 张丹枫 [70%]; 任豪毅 [50%] | 8h | 640 |
| 42 | 2.3.2 | 变更影响的软件元素核对表 |  | 2h | 2009-06-03 14:16 | 2009-06-03 16:16 | 41 | 0d |  | 孙圣鹏 | 2h | 160 |
| 43 | 2.3.3 | 影响分析报告 |  | 7.06h | 2009-06-03 16:16 | 2009-06-04 15:19 | 42 | 0d |  | 杨毅 [50%]; 梁阳 [70%] | 6h | 480 |
| 44 | 2.4 | 跟踪所有受需求变更影响的工作产品 |  | 3.12h | 2009-06-04 15:19 | 2009-06-05 09:27 | 43 | 0d |  | 任豪毅 [50%]; 杨毅 [80%]; 钱振雷 [70%] | 5h | 400 |
| 45 | 2.5 | 建立需求基准版本和需求控制版本文档 |  | 5.04h | 2009-06-05 09:27 | 2009-06-05 15:29 | 44 | 0d |  | 张丹枫 [70%]; 杨毅 [70%] | 6h | 480 |
| 46 | 2.6 | 维护需求变更的历史记录 |  | 3h | 2009-06-05 15:29 | 2009-06-08 09:29 | 45 | 0d |  | 杨毅 [70%] | 2.1h | 168 |
| 47 | 2.7 | 跟踪每项需求的状态 |  | 3h | 2009-06-08 09:29 | 2009-06-08 13:29 | 46 | 0d |  | 杨毅 | 3h | 240 |
| 48 | 2.8 | 衡量需求稳定性 |  | 4h | 2009-06-08 13:29 | 2009-06-09 08:29 | 47 | 0d |  | 梁阳 | 4h | 320 |
| 49 | 2.9 | 使用需求管理工具 |  | 2h | 2009-06-09 08:29 | 2009-06-09 10:29 | 48 | 0d |  | 梁阳 | 2h | 160 |
| 50 | 2.10 | 递交变更文档 | milestone | 0h | 2009-06-09 10:29 | 2009-06-09 10:29 | 49 | 0d |  | 张丹枫 |  |  |
